# Arca

Schedule from MS Project, 2022-01-24 to 2023-04-07, costs in $, A marks actual dates.

## Calendars

- Arca: Mon-Fri 08:00-12:00, 12:30-17:00; Sat-Sun off. Exceptions (off unless hours are given): 2022-03-21 (Dia de san Jose), 2022-04-14 (Jueves santo), 2022-04-15 (Viernes santo), 2022-05-30 (Dia de ascensión), 2022-06-20 (Corpus cristhis), 2022-06-27 (Sagrado corazon), 2022-07-04 (San pedro; san Pablo), 2022-07-20 (Dia de la Independencia), 2022-08-15 (Dia de la Asunción), 2022-10-17 (Celebracion Dia de la Raza), 2022-11-07 (Dia de Todos los Santos), 2022-11-14 (Independencia de Ctrtagena), 2022-12-08 (Dia de la inmaculada Concepcion), 2022-12-17 to 2023-01-24 (Vacaciones), 2023-02-02 (Fiesta de la candelaria), 2023-03-11 (Dia de los amigos).

## Resources

| Resource | Group | Unit | Rate | Cost per use |
| --- | --- | --- | --- | --- |
| Hernán Torres | Líder del Proyecto |  | 4166.67 |  |
| Santiago Ocampo | Programador Web |  | 4167 |  |
| Saraluz Castillo | Diseñador Web |  | 4167 |  |
| María Tovar | Analista |  | 4167 |  |
| Sofia Alandete | Tester |  | 4167 |  |
| Hosting | Licencias | Unidad |  | 26000 |
| Project | Licencias | Unidad |  | 37831 |
| Figma | Licencias | Unidad |  | 45397 |
| Bizagi | Licencias | Unidad |  | 36000 |
| Dominio | Licencias | Unidad |  | 50000 |
| StarUML | Licencias | Unidad |  | 374000 |
| GitHub | Licencias | Unidad |  |  |
| Workbench | Licencias | Unidad |  |  |
| Git | Licencias | Unidad |  |  |
| MySQL | Licencias | Unidad |  |  |
| XAMPP | Licencias | Unidad |  |  |
| Computador All in One HP | Equipos Electrónicos | Unidad |  | 1899000 |
| Internet | Servicios Públicos | Unidad |  |  |
| Luz | Servicios Públicos |  |  |  |
| Agua | Servicios Públicos |  |  |  |
| Sillas | Mobiliario |  |  | 210000 |
| Escritorio | Mobiliario |  |  | 304000 |
| Dia | Licencias | Unidad |  |  |
| Microsoft Office 365 | Licencias | Unidad |  | 136231 |

## Schedule

| ID | WBS | Task | Duration | Start | Finish | Predecessors | Complete | Remaining | Total slack | Free slack | Resources | Work | Actual work | Cost | Actual cost |
| --- | --- | --- | --- | --- | --- | --- | --- | --- | --- | --- | --- | --- | --- | --- | --- |
| 1 | 1 | **Trimestre I** | 57d | 2022-01-24 A | 2022-04-08 |  | 76% | 13.86d | 0d |  |  | 880h | 694h | 44,679,875.88 | 39,404,833.68 |
| 2 | 1.1 | **Componente Metodológico** | 17d | 2022-01-24 A | 2022-02-14 A |  | 100% |  |  |  |  | 264h | 264h | 18,195,429.12 | 16,395,429.12 |
| 3 | 1.1.1 | Nombre del proyecto | 1d | 2022-01-24 A | 2022-01-24 A |  | 100% |  |  |  | Agua [0.1%]; Escritorio; Internet [0 Unidad]; Luz [0.1%]; Sillas; Hernán Torres; Git [1 Unidad]; GitHub [1 Unidad]; Microsoft Office 365 [1 Unidad]; Computador All in One HP [1 Unidad] | 8h | 8h | 2,882,564.36 | 2,582,564.36 |
| 4 | 1.1.2 | Objetivo General | 2d | 2022-01-24 A | 2022-01-26 A | 3 | 100% |  |  |  | Agua [0.1%]; Escritorio [200%]; Internet [0 Unidad]; Luz [0.1%]; Sillas [200%]; Hernán Torres; María Tovar; Git [1 Unidad]; GitHub [1 Unidad]; Microsoft Office 365 [1 Unidad]; Computador All in One HP [2 Unidad] | 32h | 32h | 2,982,569.72 | 2,682,569.72 |
| 5 | 1.1.3 | Objetivos específicos | 3d | 2022-01-26 A | 2022-01-31 A | 4 | 100% |  |  |  | Agua [0.1%]; Escritorio [200%]; Internet [0 Unidad]; Luz [0.1%]; Sillas [200%]; Hernán Torres; Git [1 Unidad]; GitHub [1 Unidad]; María Tovar; Microsoft Office 365 [1 Unidad]; Computador All in One HP [2 Unidad] | 48h | 48h | 3,049,239.08 | 2,749,239.08 |
| 6 | 1.1.4 | Planteamiento del problema | 2d | 2022-01-31 A | 2022-02-02 A | 5 | 100% |  |  |  | Agua [0.1%]; Escritorio [200%]; Internet [0 Unidad]; Luz [0.1%]; Sillas [200%]; Hernán Torres; Git [1 Unidad]; GitHub [1 Unidad]; María Tovar; Microsoft Office 365 [1 Unidad]; Computador All in One HP [2 Unidad] | 32h | 32h | 2,982,569.72 | 2,682,569.72 |
| 7 | 1.1.5 | Alcance del proyecto | 3d | 2022-02-02 A | 2022-02-07 A | 6 | 100% |  |  |  | Agua [0.1%]; Escritorio [200%]; Internet [0 Unidad]; Luz [0.1%]; Sillas [200%]; Hernán Torres; Git [1 Unidad]; GitHub [1 Unidad]; María Tovar; Microsoft Office 365 [1 Unidad]; Computador All in One HP [2 Unidad] | 48h | 48h | 3,049,239.08 | 2,749,239.08 |
| 8 | 1.1.6 | Justificación | 6d | 2022-02-07 A | 2022-02-14 A | 7 | 100% |  |  |  | Agua [0.1%]; Escritorio [200%]; Internet [0 Unidad]; Luz [0.1%]; Sillas [200%]; Hernán Torres; Git [1 Unidad]; GitHub [1 Unidad]; María Tovar; Microsoft Office 365 [1 Unidad]; Computador All in One HP [2 Unidad] | 96h | 96h | 3,249,247.16 | 2,949,247.16 |
| 9 | 1.2 | **Levantamiento del información** | 17d | 2022-02-15 A | 2022-03-08 | 2 | 25% | 12.75d | 23d |  |  | 248h | 62h | 9,581,082.6 | 7,906,040.4 |
| 10 | 1.2.1 | Encuestas | 7d | 2022-02-15 A | 2022-02-23 |  | 25% | 5.25d | 33d | 0d | Agua [0.1%]; Escritorio [200%]; Internet [0 Unidad]; Luz [0.1%]; Sillas [200%]; Git [1 Unidad]; GitHub [1 Unidad]; María Tovar; Microsoft Office 365 [1 Unidad]; Sofia Alandete; Computador All in One HP [2 Unidad] | 112h | 28h | 3,315,935 | 2,665,907 |
| 11 | 1.2.2 | Entrevistas | 10d | 2022-02-15 A | 2022-02-28 | 10SS | 25% | 7.5d | 0d |  | Agua [0.1%]; Escritorio; Internet [0 Unidad]; Luz [0.1%]; Sillas; Git [1 Unidad]; GitHub [1 Unidad]; Microsoft Office 365 [1 Unidad]; Hernán Torres; Computador All in One HP [1 Unidad] | 80h | 20h | 3,182,564.6 | 2,632,564.4 |
| 12 | 1.2.3 | Observación | 7d | 2022-02-28 A | 2022-03-08 | 11 | 25% | 5.25d | 23d |  | Agua [0.1%]; Escritorio; Internet [0 Unidad]; Luz [0.1%]; Sillas; Git [1 Unidad]; GitHub [1 Unidad]; María Tovar; Microsoft Office 365 [1 Unidad]; Computador All in One HP [1 Unidad] | 56h | 14h | 3,082,583 | 2,607,569 |
| 13 | 1.3 | **Mapas de procesos** | 3d | 2022-03-09 A | 2022-03-11 A | 9 | 100% |  |  |  |  | 48h | 48h | 5,834,239.08 | 5,234,239.08 |
| 14 | 1.3.1 | Mapas de procesos | 3d | 2022-03-09 A | 2022-03-11 A |  | 100% |  |  |  | Agua [0.1%]; Escritorio; Internet [0 Unidad]; Luz [0.1%]; Sillas; Hernán Torres; Git [1 Unidad]; GitHub [1 Unidad]; Bizagi [1 Unidad]; Microsoft Office 365 [1 Unidad]; Computador All in One HP [1 Unidad] | 24h | 24h | 2,985,231.08 | 2,685,231.08 |
| 15 | 1.3.2 | Diagrama de flujo de procesos BPMN | 3d | 2022-03-09 A | 2022-03-11 A | 14SS | 100% |  |  |  | Agua [0.1%]; Escritorio; Internet [0 Unidad]; Luz [0.1%]; Sillas; Git [1 Unidad]; GitHub [1 Unidad]; Bizagi [1 Unidad]; María Tovar; Computador All in One HP [1 Unidad] | 24h | 24h | 2,849,008 | 2,549,008 |
| 16 | 1.4 | **Informe de requerimientos** | 10d | 2022-03-11 A | 2022-03-28 A | 13 | 100% |  |  |  |  | 136h | 136h | 4,366,174 | 3,766,174 |
| 17 | 1.4.1 | Requerimientos funcionales | 7d | 2022-03-11 A | 2022-03-23 A |  | 100% |  |  |  | Agua [0.1%]; Escritorio; Internet [0 Unidad]; Luz [0.1%]; Sillas; Git [1 Unidad]; GitHub [1 Unidad]; Microsoft Office 365 [1 Unidad]; Sofia Alandete; Computador All in One HP [1 Unidad] | 56h | 56h | 3,082,583 | 2,782,583 |
| 18 | 1.4.2 | Requerimientos no funcionales | 10d | 2022-03-11 A | 2022-03-28 A | 17SS | 100% |  |  |  | Agua [0.1%]; Escritorio; Internet [0 Unidad]; Luz [0.1%]; Sillas; Git [1 Unidad]; GitHub [1 Unidad]; Santiago Ocampo; Microsoft Office 365 [1 Unidad] | 80h | 80h | 1,283,591 | 983,591 |
| 19 | 1.5 | **Especificaciones de casos de uso** | 10d | 2022-03-28 A | 2022-04-08 A | 16 | 100% |  |  |  |  | 184h | 184h | 6,702,951.08 | 6,102,951.08 |
| 20 | 1.5.1 | Casos de Uso | 7d | 2022-03-28 A | 2022-04-05 A |  | 100% |  |  |  | Agua [0.1%]; Escritorio [200%]; Internet [0 Unidad]; Luz [0.1%]; Sillas [200%]; Git [1 Unidad]; GitHub [1 Unidad]; Santiago Ocampo; Sofia Alandete; StarUML [1 Unidad]; Computador All in One HP [2 Unidad] | 112h | 112h | 3,553,704 | 3,253,704 |
| 21 | 1.5.2 | Formato de caso de uso extendido | 3d | 2022-04-05 A | 2022-04-08 A | 20 | 100% |  |  |  | Agua [62.5%]; Escritorio [200%]; Internet [0.62 Unidad]; Luz [62.5%]; Sillas [200%]; Git [1 Unidad]; GitHub [1 Unidad]; Santiago Ocampo; Sofia Alandete; Microsoft Office 365 [1 Unidad]; Hernán Torres; Computador All in One HP [2 Unidad] | 72h | 72h | 3,149,247.08 | 2,849,247.08 |
| 22 | 2 | **Trimestre II** | 58d | 2022-04-08 A | 2022-07-01 | 1 | 88% | 7.02d | 0d |  |  | 808h | 684h | 20,438,214.2 | 18,121,526.66 |
| 23 | 2.1 | **Modelado** | 27d | 2022-04-08 A | 2022-05-18 A |  | 100% |  |  |  |  | 312h | 312h | 15,613,067.04 | 14,113,067.04 |
| 24 | 2.1.1 | Modelo Entidad Relación | 7d | 2022-04-08 A | 2022-04-21 A |  | 100% |  |  |  | Agua [0.1%]; Escritorio; Internet [0 Unidad]; Luz [0.1%]; Sillas; Git [1 Unidad]; GitHub [1 Unidad]; María Tovar; Dia [1 Unidad]; Computador All in One HP [1 Unidad] | 56h | 56h | 2,946,352 | 2,646,352 |
| 25 | 2.1.2 | Modelo Relacional | 6d | 2022-04-21 A | 2022-04-28 A | 24 | 100% |  |  |  | Agua [0.1%]; Escritorio [200%]; Internet [0 Unidad]; Luz [0.1%]; Sillas [200%]; Hernán Torres; Git [1 Unidad]; GitHub [1 Unidad]; María Tovar; Workbench [1 Unidad]; Computador All in One HP [2 Unidad] | 96h | 96h | 3,113,016.16 | 2,813,016.16 |
| 26 | 2.1.3 | Diccionario de Datos | 6d | 2022-04-28 A | 2022-05-06 A | 25 | 100% |  |  |  | Agua [0.1%]; Escritorio; Internet [0 Unidad]; Luz [0.1%]; Sillas; Git [1 Unidad]; GitHub [1 Unidad]; Workbench [1 Unidad]; Santiago Ocampo; Computador All in One HP [1 Unidad] | 48h | 48h | 2,913,016 | 2,613,016 |
| 27 | 2.1.4 | Diagrama de Clases | 8d | 2022-05-06 A | 2022-05-18 A | 26 | 100% |  |  |  | Agua [0.1%]; Escritorio; Internet [0 Unidad]; Luz [0.1%]; Sillas; Hernán Torres; Git [1 Unidad]; GitHub [1 Unidad]; StarUML [1 Unidad]; Computador All in One HP [1 Unidad] | 64h | 64h | 3,353,666.88 | 3,053,666.88 |
| 28 | 2.1.5 | Diagrama de Despliegue | 6d | 2022-05-06 A | 2022-05-16 A | 27SS | 100% |  |  |  | Agua [0.1%]; Escritorio; Internet [0 Unidad]; Luz [0.1%]; Sillas; Git [1 Unidad]; GitHub [1 Unidad]; Sofia Alandete; StarUML [1 Unidad]; Computador All in One HP [1 Unidad] | 48h | 48h | 3,287,016 | 2,987,016 |

| ID | WBS | Task | Duration | Start | Finish | Predecessors | Complete | Remaining | Total slack | Free slack | Resources | Work | Actual work | Cost | Actual cost |
| --- | --- | --- | --- | --- | --- | --- | --- | --- | --- | --- | --- | --- | --- | --- | --- |
| 29 | 2.2 | **Prototipo no funcional** | 31d | 2022-05-18 A | 2022-07-01 | 23 | 75% | 7.75d | 0d |  |  | 496h | 372h | 4,825,147.16 | 4,008,459.62 |
| 30 | 2.2.1 | Mockup | 31d | 2022-05-18 A | 2022-07-01 |  | 75% | 7.75d | 0d |  | Agua [0.1%]; Escritorio [200%]; Internet [0 Unidad]; Luz [0.1%]; Sillas [200%]; Hernán Torres; Git [1 Unidad]; GitHub [1 Unidad]; Saraluz Castillo; Figma [1 Unidad]; Computador All in One HP [2 Unidad] | 496h | 372h | 4,825,147.16 | 4,008,459.62 |
| 31 | 3 | **Trimestre III** | 45d | 2022-07-01 A | 2022-09-02 | 22 | 65% | 15.6d | 0d |  |  | 712h | 400h | 22,230,294.72 | 13,868,005.92 |
| 32 | 3.1 | **Bases de Datos** | 36d | 2022-07-01 A | 2022-08-23 |  | 89% | 4.11d | 9d | 0d |  | 280h | 248h | 12,154,991 | 8,408,647 |
| 33 | 3.1.1 | Normalización | 14d | 2022-07-01 A | 2022-07-22 A |  | 100% |  |  |  | Agua [0.1%]; Escritorio; Internet [0 Unidad]; Luz [0.1%]; Sillas; Git [1 Unidad]; GitHub [1 Unidad]; María Tovar; Microsoft Office 365 [1 Unidad]; Computador All in One HP [1 Unidad] | 112h | 112h | 3,315,935 | 3,015,935 |
| 34 | 3.1.2 | Construcción de la BD | 10d | 2022-07-22 A | 2022-08-04 A | 33 | 100% |  |  |  | Agua [0.1%]; Escritorio; Internet [0 Unidad]; Luz [0.1%]; Sillas; Git [1 Unidad]; GitHub [1 Unidad]; Santiago Ocampo; XAMPP [1 Unidad]; MySQL [1 Unidad]; Computador All in One HP [1 Unidad] | 80h | 80h | 3,046,360 | 2,746,360 |
| 35 | 3.1.3 | Datos insertados en la BD | 7d | 2022-08-04 A | 2022-08-16 A | 34 | 100% |  |  |  | Agua [0.1%]; Escritorio; Internet [0 Unidad]; Luz [0.1%]; Sillas; Git [1 Unidad]; GitHub [1 Unidad]; XAMPP [1 Unidad]; MySQL [1 Unidad]; María Tovar; Computador All in One HP [1 Unidad] | 56h | 56h | 2,946,352 | 2,646,352 |
| 36 | 3.1.4 | Consultas y Joins en la BD | 4d | 2022-08-16 | 2022-08-23 | 35 |  |  | 9d |  | Agua [0.1%]; Escritorio; Internet [0 Unidad]; Luz [0.1%]; Sillas; Git [1 Unidad]; GitHub [1 Unidad]; Santiago Ocampo; MySQL [1 Unidad]; XAMPP [1 Unidad]; Computador All in One HP [1 Unidad] | 32h |  | 2,846,344 |  |
| 37 | 3.2 | **Prototipo no funcional** | 37d | 2022-07-01 A | 2022-08-24 | 32SS | 50% | 18.5d | 0d |  |  | 304h | 152h | 6,692,717.84 | 5,459,358.92 |
| 38 | 3.2.1 | HTML | 7d | 2022-07-01 A | 2022-07-12 |  | 50% | 3.5d | 6d | 0d | Agua [0.1%]; Escritorio [200%]; Internet [0 Unidad]; Luz [0.1%]; Sillas [200%]; Hernán Torres; Git [1 Unidad]; GitHub [1 Unidad]; Saraluz Castillo; Computador All in One HP [2 Unidad] | 112h | 56h | 3,179,685.52 | 2,646,342.76 |
| 39 | 3.2.2 | CSS | 12d | 2022-07-12 A | 2022-08-24 | 38 | 50% | 6d | 0d |  | Agua [0.1%]; Escritorio [200%]; Internet [0 Unidad]; Luz [0.1%]; Sillas [200%]; Hernán Torres; Git [1 Unidad]; GitHub [1 Unidad]; Saraluz Castillo; Computador All in One HP [2 Unidad] | 192h | 96h | 3,513,032.32 | 2,813,016.16 |
| 40 | 3.3 | Modelos tecnológicos | 8d | 2022-08-24 | 2022-09-02 | 39 |  |  | 0d |  | Agua [0.1%]; Escritorio; Internet [0 Unidad]; Luz [0.1%]; Sillas [200%]; Git [1 Unidad]; GitHub [1 Unidad]; Computador All in One HP [2 Unidad]; Microsoft Office 365 [1 Unidad]; Hernán Torres; María Tovar | 128h |  | 3,382,585.88 |  |
| 41 | 4 | **Trimestre IV** | 68d | 2022-09-02 | 2022-12-06 | 31 |  |  | 0d |  |  | 664h |  | 17,013,003.4 |  |
| 42 | 4.1 | **Construcción de manuales** | 20d | 2022-09-02 | 2022-09-29 |  |  |  | 0d |  |  | 280h |  | 6,865,182.4 |  |
| 43 | 4.1.1 | Técnico | 20d | 2022-09-02 | 2022-09-29 |  |  |  | 0d |  | Agua [0.1%]; Escritorio; Internet [0 Unidad]; Luz [0.1%]; Sillas; Git [1 Unidad]; GitHub [1 Unidad]; Microsoft Office 365 [1 Unidad]; Sofia Alandete; Computador All in One HP [1 Unidad] | 160h |  | 3,515,951 |  |
| 44 | 4.1.2 | Instalación | 15d | 2022-09-02 | 2022-09-22 | 43SS |  |  | 5d |  | Agua [0.1%]; Escritorio; Internet [0 Unidad]; Luz [0.1%]; Sillas; Hernán Torres; Git [1 Unidad]; GitHub [1 Unidad]; Microsoft Office 365 [1 Unidad]; Computador All in One HP [1 Unidad] | 120h |  | 3,349,231.4 |  |
| 45 | 4.2 | **Testing** | 48d | 2022-09-29 | 2022-12-06 | 42 |  |  | 0d |  |  | 384h |  | 10,147,821 |  |
| 46 | 4.2.1 | Pruebas Unitarias | 20d | 2022-09-29 | 2022-10-27 |  |  |  | 0d |  | Agua [0.1%]; Escritorio; Internet [0 Unidad]; Luz [0.1%]; Sillas; Git [1 Unidad]; GitHub [1 Unidad]; Sofia Alandete; Microsoft Office 365 [1 Unidad]; Computador All in One HP [1 Unidad] | 160h |  | 3,515,951 |  |
| 47 | 4.2.2 | Pruebas caja negra | 14d | 2022-10-27 | 2022-11-17 | 46 |  |  | 0d |  | Agua [0.1%]; Escritorio; Internet [0 Unidad]; Luz [0.1%]; Sillas; Git [1 Unidad]; GitHub [1 Unidad]; Sofia Alandete; Microsoft Office 365 [1 Unidad]; Computador All in One HP [1 Unidad] | 112h |  | 3,315,935 |  |
| 48 | 4.2.3 | Pruebas caja blanca | 14d | 2022-11-17 | 2022-12-06 | 47 |  |  | 0d |  | Agua [0.1%]; Escritorio; Internet [0 Unidad]; Luz [0.1%]; Sillas; Git [1 Unidad]; GitHub [1 Unidad]; Sofia Alandete; Microsoft Office 365 [1 Unidad]; Computador All in One HP [1 Unidad] | 112h |  | 3,315,935 |  |
| 49 | 5 | **Trimestre V** | 30d | 2022-12-06 | 2023-02-23 | 41 |  |  | 0d |  |  | 592h |  | 8,165,246.8 |  |
| 50 | 5.1 | **Cuadro comparativo** | 20d | 2022-12-06 | 2023-02-10 |  |  |  | 10d | 0d |  | 112h |  | 3,315,935 |  |
| 51 | 5.1.1 | Proveedores | 14d | 2022-12-06 | 2023-02-10 |  |  |  | 10d |  | Agua [0.1%]; Escritorio; Internet [0 Unidad]; Luz [0.1%]; Sillas; Git [1 Unidad]; GitHub [1 Unidad]; María Tovar; Microsoft Office 365 [1 Unidad]; Computador All in One HP [1 Unidad] | 112h |  | 3,315,935 |  |
| 52 | 5.2 | **Documentación** | 30d | 2022-12-06 | 2023-02-23 | 50SS |  |  | 0d |  |  | 480h |  | 4,849,311.8 |  |
| 53 | 5.2.1 | Pruebas | 30d | 2022-12-06 | 2023-02-23 |  |  |  | 0d |  | Agua [0.1%]; Escritorio [200%]; Internet [0 Unidad]; Luz [0.1%]; Sillas [200%]; Hernán Torres; Git [1 Unidad]; GitHub [1 Unidad]; Sofia Alandete; Microsoft Office 365 [1 Unidad]; Computador All in One HP [2 Unidad] | 480h |  | 4,849,311.8 |  |

| ID | WBS | Task | Duration | Start | Finish | Predecessors | Total slack | Resources | Work | Cost |
| --- | --- | --- | --- | --- | --- | --- | --- | --- | --- | --- |
| 54 | 6 | **Trimestre VI** | 33d | 2023-02-23 | 2023-04-07 | 49 | 0d |  | 240h | 6,698,542 |
| 55 | 6.1 | Usuario | 16d | 2023-02-23 | 2023-03-16 |  | 0d | Internet [0 Unidad]; Luz [0.1%]; Sillas; Agua [0.1%]; Escritorio; Git [1 Unidad]; GitHub [1 Unidad]; Santiago Ocampo; Microsoft Office 365 [1 Unidad]; Computador All in One HP [1 Unidad] | 128h | 3,382,607 |
| 56 | 6.2 | Operación | 14d | 2023-03-16 | 2023-04-07 | 55 | 0d | Agua [0.1%]; Escritorio; Internet [0 Unidad]; Luz [0.1%]; Sillas; Git [1 Unidad]; GitHub [1 Unidad]; Microsoft Office 365 [1 Unidad]; Sofia Alandete; Computador All in One HP [1 Unidad] | 112h | 3,315,935 |
